# netcollege开发计划

Schedule from MS Project, 2019-09-11 to 2019-12-17, A marks actual dates.

## Calendars

- 标准: Mon-Fri 08:00-12:00, 13:00-17:00; Sat-Sun off. Exceptions (off unless hours are given): 2019-09-13 to 2019-09-15 (中秋节), 2019-09-29 08:00-12:00, 13:00-17:00 (国庆调整工作日9.29), 2019-10-01 to 2019-10-07 (国庆), 2019-10-12 08:00-12:00, 13:00-17:00 (国庆调整工作日10.12).

## Resources

| Resource |
| --- |
| 开分人员 |
| 冯雷 |
| 王战永 |

## Schedule

| ID | WBS | Task | Duration | Start | Finish | Predecessors | Complete | Remaining | Total slack | Resources | Work | Actual work |
| --- | --- | --- | --- | --- | --- | --- | --- | --- | --- | --- | --- | --- |
| 1 | 1 | **netcollege开发** | 65.29d | 2019-09-11 08:00 A | 2019-12-17 10:19 |  | 34% | 42.98d | 0d |  | 786.29h | 278.26h |
| 2 | 1.1 | **开发准备/代码分析** | 6d | 2019-09-11 08:00 A | 2019-09-19 17:00 A |  | 100% |  |  |  | 100h | 100h |
| 3 | 1.1.1 | 建立代码版本控制git仓库 | 0.5d | 2019-09-12 08:00 A | 2019-09-12 12:00 A |  | 100% |  |  | 冯雷 | 4h | 4h |
| 4 | 1.1.2 | 分析研究代码结构 | 4d | 2019-09-11 08:00 A | 2019-09-17 17:00 A |  | 100% |  |  | 冯雷; 王战永 | 64h | 64h |
| 5 | 1.1.3 | 导入前端框架依赖js/css/font/创建新界面layout/header/footer/menu | 2d | 2019-09-18 08:00 A | 2019-09-19 17:00 A | 4 | 100% |  |  | 冯雷; 王战永 | 32h | 32h |
| 6 | 1.2 | **后台功能** | 40.01d | 2019-09-20 08:00 A | 2019-11-20 08:02 |  | 40% | 24.16d | 0.56d |  | 462.26h | 178.26h |
| 7 | 1.2.1 | 后台首页 | 0.56d | 2019-09-20 08:00 A | 2019-09-20 13:26 A | 5 | 100% |  |  | 冯雷 [90%] | 4h | 4h |
| 8 | 1.2.2 | **设备管理** | 9.53d | 2019-09-20 08:00 A | 2019-10-09 13:15 A |  | 100% |  |  |  | 98.26h | 98.26h |
| 9 | 1.2.2.1 | **实验设备管理** | 3.98d | 2019-09-20 13:26 A | 2019-09-26 13:14 A |  | 100% |  |  |  | 22.26h | 22.26h |
| 10 | 1.2.2.1.1 | 实验设备列表 | 0.79d | 2019-09-20 13:26 A | 2019-09-23 10:47 A | 7 | 100% |  |  | 王战永 [70%] | 4.45h | 4.45h |
| 11 | 1.2.2.1.2 | 新增实验设备 | 0.79d | 2019-09-23 10:47 A | 2019-09-24 09:08 A | 10 | 100% |  |  | 王战永 [70%] | 4.45h | 4.45h |
| 12 | 1.2.2.1.3 | 查看设备状态 | 0.79d | 2019-09-24 09:08 A | 2019-09-24 16:29 A | 11 | 100% |  |  | 王战永 [70%] | 4.45h | 4.45h |
| 13 | 1.2.2.1.4 | 编辑实验设备 | 0.8d | 2019-09-24 16:29 A | 2019-09-25 14:53 A | 12 | 100% |  |  | 王战永 [70%] | 4.48h | 4.48h |
| 14 | 1.2.2.1.5 | 删除实验设备 | 0.79d | 2019-09-25 14:53 A | 2019-09-26 13:14 A | 13 | 100% |  |  | 王战永 [70%] | 4.45h | 4.45h |
| 15 | 1.2.2.2 | **设备类别设置** | 2.86d | 2019-09-20 08:00 A | 2019-09-24 15:51 A |  | 100% |  |  |  | 16h | 16h |
| 16 | 1.2.2.2.1 | 设备类别列表 | 0.71d | 2019-09-20 08:00 A | 2019-09-20 14:42 A | 5 | 100% |  |  | 王战永 [70%] | 4h | 4h |
| 17 | 1.2.2.2.2 | 新建设备类别 | 0.71d | 2019-09-20 14:42 A | 2019-09-23 11:25 A | 16 | 100% |  |  | 王战永 [70%] | 4h | 4h |
| 18 | 1.2.2.2.3 | 编辑设备类别 | 0.71d | 2019-09-23 11:25 A | 2019-09-24 09:08 A | 17 | 100% |  |  | 王战永 [70%] | 4h | 4h |
| 19 | 1.2.2.2.4 | 删除设备类别 | 0.71d | 2019-09-24 09:08 A | 2019-09-24 15:51 A | 18 | 100% |  |  | 王战永 [70%] | 4h | 4h |
| 20 | 1.2.2.3 | **设备型号管理** | 2.22d | 2019-09-26 13:14 A | 2019-09-29 15:01 A |  | 100% |  |  |  | 16h | 16h |
| 21 | 1.2.2.3.1 | 设备型号列表 | 0.56d | 2019-09-26 13:14 A | 2019-09-27 08:41 A | 14 | 100% |  |  | 冯雷 [90%] | 4h | 4h |
| 22 | 1.2.2.3.2 | 新建设备型号 | 0.56d | 2019-09-27 08:41 A | 2019-09-27 14:08 A | 21 | 100% |  |  | 冯雷 [90%] | 4h | 4h |
| 23 | 1.2.2.3.3 | 编辑设备型号 | 0.56d | 2019-09-27 14:08 A | 2019-09-29 09:34 A | 22 | 100% |  |  | 冯雷 [90%] | 4h | 4h |
| 24 | 1.2.2.3.4 | 删除设备型号 | 0.56d | 2019-09-29 09:34 A | 2019-09-29 15:01 A | 23 | 100% |  |  | 冯雷 [90%] | 4h | 4h |

| ID | WBS | Task | Duration | Start | Finish | Predecessors | Complete | Remaining | Total slack | Resources | Work | Actual work |
| --- | --- | --- | --- | --- | --- | --- | --- | --- | --- | --- | --- | --- |
| 25 | 1.2.2.4 | **设备命令过滤** | 4.29d | 2019-09-24 15:51 A | 2019-09-30 09:09 A |  | 100% |  |  |  | 24h | 24h |
| 26 | 1.2.2.4.1 | 设备命令列表 | 0.71d | 2019-09-24 15:51 A | 2019-09-25 13:34 A | 19 | 100% |  |  | 王战永 [70%] | 4h | 4h |
| 27 | 1.2.2.4.2 | 添加过滤指令-新增禁止指令例外参数 | 0.71d | 2019-09-25 13:34 A | 2019-09-26 10:17 A | 26 | 100% |  |  | 王战永 [70%] | 4h | 4h |
| 28 | 1.2.2.4.3 | 查看禁止指令例外参数-编辑例外参数 | 0.71d | 2019-09-26 10:17 A | 2019-09-27 08:00 A | 27 | 100% |  |  | 王战永 [70%] | 4h | 4h |
| 29 | 1.2.2.4.4 | 查看禁止指令例外参数-删除列外参数 | 0.71d | 2019-09-27 08:00 A | 2019-09-27 14:43 A | 28 | 100% |  |  | 王战永 [70%] | 4h | 4h |
| 30 | 1.2.2.4.5 | 编辑命令-新增禁止指令例外参数 | 0.71d | 2019-09-27 14:43 A | 2019-09-29 11:26 A | 29 | 100% |  |  | 王战永 [70%] | 4h | 4h |
| 31 | 1.2.2.4.6 | 删除命令 | 0.71d | 2019-09-29 11:26 A | 2019-09-30 09:09 A | 30 | 100% |  |  | 王战永 [70%] | 4h | 4h |
| 32 | 1.2.2.5 | **虚拟化设备管理** | 2.78d | 2019-09-29 15:01 A | 2019-10-09 13:15 A |  | 100% |  |  |  | 20h | 20h |
| 33 | 1.2.2.5.1 | 虚拟化设备列表 | 0.56d | 2019-09-29 15:01 A | 2019-09-30 10:28 A | 24 | 100% |  |  | 冯雷 [90%] | 4h | 4h |
| 34 | 1.2.2.5.2 | 新增虚拟化设备 | 0.56d | 2019-09-30 10:28 A | 2019-09-30 15:54 A | 33 | 100% |  |  | 冯雷 [90%] | 4h | 4h |
| 35 | 1.2.2.5.3 | 查看虚拟系统-新增虚拟系统 | 0.56d | 2019-09-30 15:54 A | 2019-10-08 11:21 A | 34 | 100% |  |  | 冯雷 [90%] | 4h | 4h |
| 36 | 1.2.2.5.4 | 编辑虚拟化设备 | 0.56d | 2019-10-08 11:21 A | 2019-10-08 16:48 A | 35 | 100% |  |  | 冯雷 [90%] | 4h | 4h |
| 37 | 1.2.2.5.5 | 删除虚拟化设备 | 0.56d | 2019-10-08 16:48 A | 2019-10-09 13:15 A | 36 | 100% |  |  | 冯雷 [90%] | 4h | 4h |
| 38 | 1.2.3 | **实验室管理** | 9.29d | 2019-09-30 09:09 A | 2019-10-17 11:26 |  | 88% | 1.08d | 4.68d |  | 88h | 76h |
| 39 | 1.2.3.1 | **实验室管理** | 9.29d | 2019-09-30 09:09 A | 2019-10-17 11:26 A |  | 100% |  |  |  | 52h | 52h |
| 40 | 1.2.3.1.1 | 实验室列表 | 0.71d | 2019-09-30 09:09 A | 2019-09-30 15:51 A | 31 | 100% |  |  | 王战永 [70%] | 4h | 4h |
| 41 | 1.2.3.1.2 | 新建实验室 | 0.71d | 2019-09-30 15:51 A | 2019-10-08 13:34 A | 40 | 100% |  |  | 王战永 [70%] | 4h | 4h |
| 42 | 1.2.3.1.3 | 查看实验组-新建实验组 | 0.71d | 2019-10-08 13:34 A | 2019-10-09 10:17 A | 41 | 100% |  |  | 王战永 [70%] | 4h | 4h |
| 43 | 1.2.3.1.4 | 查看实验组-克隆实验组 | 0.71d | 2019-10-09 10:17 A | 2019-10-10 08:00 A | 42 | 100% |  |  | 王战永 [70%] | 4h | 4h |
| 44 | 1.2.3.1.5 | 查看实验组-查看拥有设备-查看设备状态 | 0.71d | 2019-10-10 08:00 A | 2019-10-10 14:43 A | 43 | 100% |  |  | 王战永 [70%] | 4h | 4h |
| 45 | 1.2.3.1.6 | 查看实验组-查看拥有设备-编辑设备信息 | 0.71d | 2019-10-10 14:43 A | 2019-10-11 11:26 A | 44 | 100% |  |  | 王战永 [70%] | 4h | 4h |
| 46 | 1.2.3.1.7 | 查看实验组-查看拥有设备-删除设备 | 0.71d | 2019-10-11 11:26 A | 2019-10-12 09:09 A | 45 | 100% |  |  | 王战永 [70%] | 4h | 4h |
| 47 | 1.2.3.1.8 | 查看实验组-查看拥有设备-安排实验用户-实验用户列表 | 0.71d | 2019-10-12 09:09 A | 2019-10-12 15:52 A | 46 | 100% |  |  | 王战永 [70%] | 4h | 4h |
| 48 | 1.2.3.1.9 | 查看实验组-查看拥有设备-安排实验用户-安排实验用户 | 0.71d | 2019-10-12 15:52 A | 2019-10-14 13:35 A | 47 | 100% |  |  | 王战永 [70%] | 4h | 4h |
| 49 | 1.2.3.1.10 | 查看实验组-编辑实验组 | 0.71d | 2019-10-14 13:35 A | 2019-10-15 10:18 A | 48 | 100% |  |  | 王战永 [70%] | 4h | 4h |
| 50 | 1.2.3.1.11 | 查看实验组-删除实验组 | 0.71d | 2019-10-15 10:18 A | 2019-10-16 08:00 A | 49 | 100% |  |  | 王战永 [70%] | 4h | 4h |
| 51 | 1.2.3.1.12 | 编辑实验室 | 0.71d | 2019-10-16 08:00 A | 2019-10-16 14:43 A | 50 | 100% |  |  | 王战永 [70%] | 4h | 4h |
| 52 | 1.2.3.1.13 | 删除实验室 | 0.71d | 2019-10-16 14:43 A | 2019-10-17 11:26 A | 51 | 100% |  |  | 王战永 [70%] | 4h | 4h |

| ID | WBS | Task | Duration | Start | Finish | Predecessors | Complete | Remaining | Total slack | Free slack | Resources | Work | Actual work |
| --- | --- | --- | --- | --- | --- | --- | --- | --- | --- | --- | --- | --- | --- |
| 53 | 1.2.3.2 | **底层设备控制模块** | 2.78d | 2019-10-09 13:15 A | 2019-10-12 10:28 A |  | 100% |  |  |  |  | 20h | 20h |
| 54 | 1.2.3.2.1 | 底层设备控制模块列表 | 0.56d | 2019-10-09 13:15 A | 2019-10-10 08:41 A | 37 | 100% |  |  |  | 冯雷 [90%] | 4h | 4h |
| 55 | 1.2.3.2.2 | 新增底层设备控制模块 | 0.56d | 2019-10-10 08:41 A | 2019-10-10 14:08 A | 54 | 100% |  |  |  | 冯雷 [90%] | 4h | 4h |
| 56 | 1.2.3.2.3 | 查看使用情况 | 0.56d | 2019-10-10 14:08 A | 2019-10-11 09:35 A | 55 | 100% |  |  |  | 冯雷 [90%] | 4h | 4h |
| 57 | 1.2.3.2.4 | 编辑底层设备控制模块 | 0.56d | 2019-10-11 09:35 A | 2019-10-11 15:01 A | 56 | 100% |  |  |  | 冯雷 [90%] | 4h | 4h |
| 58 | 1.2.3.2.5 | 删除底层设备控制模块 | 0.56d | 2019-10-11 15:01 A | 2019-10-12 10:28 A | 57 | 100% |  |  |  | 冯雷 [90%] | 4h | 4h |
| 59 | 1.2.3.3 | **网络拓扑管理模块** | 2.22d | 2019-10-12 10:28 A | 2019-10-15 13:15 |  | 25% | 1.67d | 6.58d |  |  | 16h | 4h |
| 60 | 1.2.3.3.1 | 网络拓扑管理模块列表 | 0.56d | 2019-10-12 10:28 A | 2019-10-12 15:55 A | 58 | 100% |  |  |  | 冯雷 [90%] | 4h | 4h |
| 61 | 1.2.3.3.2 | 新增络拓扑管理模块 | 0.56d | 2019-10-12 15:55 | 2019-10-14 11:21 | 60 |  |  | 6.58d | 0d | 冯雷 [90%] | 4h |  |
| 62 | 1.2.3.3.3 | 编辑络拓扑管理模块 | 0.56d | 2019-10-14 11:21 | 2019-10-14 16:48 | 61 |  |  | 6.58d | 0d | 冯雷 [90%] | 4h |  |
| 63 | 1.2.3.3.4 | 删除络拓扑管理模块 | 0.56d | 2019-10-14 16:48 | 2019-10-15 13:15 | 62 |  |  | 6.58d | 0d | 冯雷 [90%] | 4h |  |
| 64 | 1.2.4 | **课程管理** | 12.61d | 2019-10-15 13:15 | 2019-11-01 09:10 |  |  |  | 0d |  |  | 76h |  |
| 65 | 1.2.4.1 | **课程管理** | 10.72d | 2019-10-17 11:26 | 2019-11-01 09:10 |  |  |  | 0d |  |  | 60h |  |
| 66 | 1.2.4.1.1 | 课程列表 | 0.71d | 2019-10-17 11:26 | 2019-10-18 09:09 | 52 |  |  | 0d |  | 王战永 [70%] | 4h |  |
| 67 | 1.2.4.1.2 | 新建课程 | 0.71d | 2019-10-18 09:09 | 2019-10-18 15:52 | 66 |  |  | 0d |  | 王战永 [70%] | 4h |  |
| 68 | 1.2.4.1.3 | 课件管理-课件列表 | 0.71d | 2019-10-18 15:52 | 2019-10-21 13:35 | 67 |  |  | 0d |  | 王战永 [70%] | 4h |  |
| 69 | 1.2.4.1.4 | 课件管理-导入课件 | 0.71d | 2019-10-21 13:35 | 2019-10-22 10:18 | 68 |  |  | 0d |  | 王战永 [70%] | 4h |  |
| 70 | 1.2.4.1.5 | 课件管理-编辑课件 | 0.71d | 2019-10-22 10:18 | 2019-10-23 08:01 | 69 |  |  | 0d |  | 王战永 [70%] | 4h |  |
| 71 | 1.2.4.1.6 | 课件管理-删除课件 | 0.71d | 2019-10-23 08:01 | 2019-10-23 14:44 | 70 |  |  | 0d |  | 王战永 [70%] | 4h |  |
| 72 | 1.2.4.1.7 | 课堂作业-课程作业列表 | 0.71d | 2019-10-23 14:44 | 2019-10-24 11:27 | 71 |  |  | 0d |  | 王战永 [70%] | 4h |  |
| 73 | 1.2.4.1.8 | 课堂作业-作业统计 | 0.71d | 2019-10-24 11:27 | 2019-10-25 09:09 | 72 |  |  | 0d |  | 王战永 [70%] | 4h |  |
| 74 | 1.2.4.1.9 | 课堂作业-布置作业 | 0.71d | 2019-10-25 09:09 | 2019-10-25 15:52 | 73 |  |  | 0d |  | 王战永 [70%] | 4h |  |
| 75 | 1.2.4.1.10 | 编辑课程-课程设置 | 0.71d | 2019-10-25 15:52 | 2019-10-28 13:35 | 74 |  |  | 0d |  | 王战永 [70%] | 4h |  |
| 76 | 1.2.4.1.11 | 编辑课程-课程信息-编辑课程信息 | 0.71d | 2019-10-28 13:35 | 2019-10-29 10:18 | 75 |  |  | 0d |  | 王战永 [70%] | 4h |  |
| 77 | 1.2.4.1.12 | 编辑课程-实验步骤-编辑实验步骤 | 0.71d | 2019-10-29 10:18 | 2019-10-30 08:01 | 76 |  |  | 0d |  | 王战永 [70%] | 4h |  |
| 78 | 1.2.4.1.13 | 编辑课程-教学大纲-编辑教学大纲 | 0.71d | 2019-10-30 08:01 | 2019-10-30 14:44 | 77 |  |  | 0d |  | 王战永 [70%] | 4h |  |
| 79 | 1.2.4.1.14 | 编辑课程-网络拓扑 | 0.71d | 2019-10-30 14:44 | 2019-10-31 11:27 | 78 |  |  | 0d |  | 王战永 [70%] | 4h |  |
| 80 | 1.2.4.1.15 | 删除课程 | 0.71d | 2019-10-31 11:27 | 2019-11-01 09:10 | 79 |  |  | 0d |  | 王战永 [70%] | 4h |  |

| ID | WBS | Task | Duration | Start | Finish | Predecessors | Total slack | Free slack | Resources | Work |
| --- | --- | --- | --- | --- | --- | --- | --- | --- | --- | --- |
| 81 | 1.2.4.2 | **课程分类** | 0.56d | 2019-10-15 13:15 | 2019-10-16 08:42 |  | 6.58d |  |  | 4h |
| 82 | 1.2.4.2.1 | 课程分类管理-添加二级分类 | 0.56d | 2019-10-15 13:15 | 2019-10-16 08:42 | 63 | 6.58d | 0d | 冯雷 [90%] | 4h |
| 83 | 1.2.4.3 | **课程调度** | 1.67d | 2019-10-16 08:42 | 2019-10-17 15:02 |  | 6.58d |  |  | 12h |
| 84 | 1.2.4.3.1 | 课程调度-课程调度列表 | 0.56d | 2019-10-16 08:42 | 2019-10-16 14:08 | 82 | 6.58d | 0d | 冯雷 [90%] | 4h |
| 85 | 1.2.4.3.2 | 课程调度-加载课程 | 0.56d | 2019-10-16 14:08 | 2019-10-17 09:35 | 84 | 6.58d | 0d | 冯雷 [90%] | 4h |
| 86 | 1.2.4.3.3 | 课程调度-添加实验组 | 0.56d | 2019-10-17 09:35 | 2019-10-17 15:02 | 85 | 6.58d | 0d | 冯雷 [90%] | 4h |
| 87 | 1.2.5 | **拓扑管理** | 5.56d | 2019-10-17 15:02 | 2019-10-25 10:29 |  | 6.58d |  |  | 40h |
| 88 | 1.2.5.1 | **网络拓扑分类** | 2.22d | 2019-10-17 15:02 | 2019-10-21 16:48 |  | 6.58d |  |  | 16h |
| 89 | 1.2.5.1.1 | 网络拓扑分类列表 | 0.56d | 2019-10-17 15:02 | 2019-10-18 10:28 | 86 | 6.58d | 0d | 冯雷 [90%] | 4h |
| 90 | 1.2.5.1.2 | 添加网络拓扑分类 | 0.56d | 2019-10-18 10:28 | 2019-10-18 15:55 | 89 | 6.58d | 0d | 冯雷 [90%] | 4h |
| 91 | 1.2.5.1.3 | 编辑网络拓扑分类 | 0.56d | 2019-10-18 15:55 | 2019-10-21 11:22 | 90 | 6.58d | 0d | 冯雷 [90%] | 4h |
| 92 | 1.2.5.1.4 | 删除网络拓扑分类 | 0.56d | 2019-10-21 11:22 | 2019-10-21 16:48 | 91 | 6.58d | 0d | 冯雷 [90%] | 4h |
| 93 | 1.2.5.2 | **拓扑端口管理** | 1.67d | 2019-10-21 16:48 | 2019-10-23 14:09 |  | 6.58d |  |  | 12h |
| 94 | 1.2.5.2.1 | 拓扑端口列表 | 0.56d | 2019-10-21 16:48 | 2019-10-22 13:15 | 92 | 6.58d | 0d | 冯雷 [90%] | 4h |
| 95 | 1.2.5.2.2 | 新增拓扑端口 | 0.56d | 2019-10-22 13:15 | 2019-10-23 08:42 | 94 | 6.58d | 0d | 冯雷 [90%] | 4h |
| 96 | 1.2.5.2.3 | 删除拓扑端口 | 0.56d | 2019-10-23 08:42 | 2019-10-23 14:09 | 95 | 6.58d | 0d | 冯雷 [90%] | 4h |
| 97 | 1.2.5.3 | **网络拓扑设计** | 1.67d | 2019-10-23 14:09 | 2019-10-25 10:29 |  | 6.58d |  |  | 12h |
| 98 | 1.2.5.3.1 | 添加网络拓扑 | 0.56d | 2019-10-23 14:09 | 2019-10-24 09:35 | 96 | 6.58d | 0d | 冯雷 [90%] | 4h |
| 99 | 1.2.5.3.2 | 编辑网络拓扑 | 0.56d | 2019-10-24 09:35 | 2019-10-24 15:02 | 98 | 6.58d | 0d | 冯雷 [90%] | 4h |
| 100 | 1.2.5.3.3 | 删除网络拓扑 | 0.56d | 2019-10-24 15:02 | 2019-10-25 10:29 | 99 | 6.58d | 0d | 冯雷 [90%] | 4h |
| 101 | 1.2.6 | **用户管理** | 11.27d | 2019-10-25 10:29 | 2019-11-11 13:36 |  | 0d |  |  | 60h |
| 102 | 1.2.6.1 | **组织管理** | 2.22d | 2019-10-25 10:29 | 2019-10-29 13:15 |  | 6.58d |  |  | 16h |
| 103 | 1.2.6.1.1 | 组织管理列表 | 0.56d | 2019-10-25 10:29 | 2019-10-25 15:55 | 100 | 6.58d | 0d | 冯雷 [90%] | 4h |
| 104 | 1.2.6.1.2 | 新建组织 | 0.56d | 2019-10-25 15:55 | 2019-10-28 11:22 | 103 | 6.58d | 0d | 冯雷 [90%] | 4h |
| 105 | 1.2.6.1.3 | 编辑组织 | 0.56d | 2019-10-28 11:22 | 2019-10-28 16:49 | 104 | 6.58d | 0d | 冯雷 [90%] | 4h |
| 106 | 1.2.6.1.4 | 删除组织 | 0.56d | 2019-10-28 16:49 | 2019-10-29 13:15 | 105 | 6.58d | 0d | 冯雷 [90%] | 4h |

| ID | WBS | Task | Duration | Start | Finish | Predecessors | Total slack | Free slack | Resources | Work |
| --- | --- | --- | --- | --- | --- | --- | --- | --- | --- | --- |
| 107 | 1.2.6.2 | **审核用户** | 1.11d | 2019-10-29 13:15 | 2019-10-30 14:09 |  | 6.58d |  |  | 8h |
| 108 | 1.2.6.2.1 | 审核用户列表 | 0.56d | 2019-10-29 13:15 | 2019-10-30 08:42 | 106 | 6.58d | 0d | 冯雷 [90%] | 4h |
| 109 | 1.2.6.2.2 | 删除审核用户 | 0.56d | 2019-10-30 08:42 | 2019-10-30 14:09 | 108 | 6.58d | 0d | 冯雷 [90%] | 4h |
| 110 | 1.2.6.3 | **用户管理** | 6.43d | 2019-11-01 09:10 | 2019-11-11 13:36 |  | 0d |  |  | 36h |
| 111 | 1.2.6.3.1 | 用户列表 | 0.71d | 2019-11-01 09:10 | 2019-11-01 15:53 | 80 | 0d |  | 王战永 [70%] | 4h |
| 112 | 1.2.6.3.2 | 新增用户 | 0.71d | 2019-11-01 15:53 | 2019-11-04 13:36 | 111 | 0d |  | 王战永 [70%] | 4h |
| 113 | 1.2.6.3.3 | 密文导入用户 | 0.71d | 2019-11-04 13:36 | 2019-11-05 10:18 | 112 | 0d |  | 王战永 [70%] | 4h |
| 114 | 1.2.6.3.4 | 明文导入用户 | 0.71d | 2019-11-05 10:18 | 2019-11-06 08:01 | 113 | 0d |  | 王战永 [70%] | 4h |
| 115 | 1.2.6.3.5 | 导出用户 | 0.71d | 2019-11-06 08:01 | 2019-11-06 14:44 | 114 | 0d |  | 王战永 [70%] | 4h |
| 116 | 1.2.6.3.6 | 启用/锁定用户 | 0.71d | 2019-11-06 14:44 | 2019-11-07 11:27 | 115 | 0d |  | 王战永 [70%] | 4h |
| 117 | 1.2.6.3.7 | 查看用户信息 | 0.71d | 2019-11-07 11:27 | 2019-11-08 09:10 | 116 | 0d |  | 王战永 [70%] | 4h |
| 118 | 1.2.6.3.8 | 编辑用户 | 0.71d | 2019-11-08 09:10 | 2019-11-08 15:53 | 117 | 0d |  | 王战永 [70%] | 4h |
| 119 | 1.2.6.3.9 | 删除用户 | 0.71d | 2019-11-08 15:53 | 2019-11-11 13:36 | 118 | 0d |  | 王战永 [70%] | 4h |
| 120 | 1.2.7 | **查询统计** | 7.78d | 2019-10-30 14:09 | 2019-11-11 11:23 |  | 6.58d |  |  | 56h |
| 121 | 1.2.7.1 | **用户考勤** | 1.67d | 2019-10-30 14:09 | 2019-11-01 10:29 |  | 6.58d |  |  | 12h |
| 122 | 1.2.7.1.1 | 用户考勤列表 | 0.56d | 2019-10-30 14:09 | 2019-10-31 09:36 | 109 | 6.58d | 0d | 冯雷 [90%] | 4h |
| 123 | 1.2.7.1.2 | 编辑用户考勤 | 0.56d | 2019-10-31 09:36 | 2019-10-31 15:02 | 122 | 6.58d | 0d | 冯雷 [90%] | 4h |
| 124 | 1.2.7.1.3 | 删除用户考勤 | 0.56d | 2019-10-31 15:02 | 2019-11-01 10:29 | 123 | 6.58d | 0d | 冯雷 [90%] | 4h |
| 125 | 1.2.7.2 | **在线用户** | 1.11d | 2019-11-01 10:29 | 2019-11-04 11:22 |  | 6.58d |  |  | 8h |
| 126 | 1.2.7.2.1 | 在线用户列表 | 0.56d | 2019-11-01 10:29 | 2019-11-01 15:56 | 124 | 6.58d | 0d | 冯雷 [90%] | 4h |
| 127 | 1.2.7.2.2 | 查看在线用户详情 | 0.56d | 2019-11-01 15:56 | 2019-11-04 11:22 | 126 | 6.58d | 0d | 冯雷 [90%] | 4h |
| 128 | 1.2.7.3 | **命令日志** | 1.67d | 2019-11-04 11:22 | 2019-11-06 08:42 |  | 6.58d |  |  | 12h |
| 129 | 1.2.7.3.1 | 命令日志列表 | 0.56d | 2019-11-04 11:22 | 2019-11-04 16:49 | 127 | 6.58d | 0d | 冯雷 [90%] | 4h |
| 130 | 1.2.7.3.2 | 查看详细命令 | 0.56d | 2019-11-04 16:49 | 2019-11-05 13:16 | 129 | 6.58d | 0d | 冯雷 [90%] | 4h |
| 131 | 1.2.7.3.3 | 删除命令日志 | 0.56d | 2019-11-05 13:16 | 2019-11-06 08:42 | 130 | 6.58d | 0d | 冯雷 [90%] | 4h |

| ID | WBS | Task | Duration | Start | Finish | Predecessors | Total slack | Free slack | Resources | Work |
| --- | --- | --- | --- | --- | --- | --- | --- | --- | --- | --- |
| 132 | 1.2.7.4 | **操作日志** | 1.11d | 2019-11-06 08:42 | 2019-11-07 09:36 |  | 6.58d |  |  | 8h |
| 133 | 1.2.7.4.1 | 操作日志列表 | 0.56d | 2019-11-06 08:42 | 2019-11-06 14:09 | 131 | 6.58d | 0d | 冯雷 [90%] | 4h |
| 134 | 1.2.7.4.2 | 查看操作日志 | 0.56d | 2019-11-06 14:09 | 2019-11-07 09:36 | 133 | 6.58d | 0d | 冯雷 [90%] | 4h |
| 135 | 1.2.7.5 | **恢复日志** | 1.11d | 2019-11-07 09:36 | 2019-11-08 10:29 |  | 6.58d |  |  | 8h |
| 136 | 1.2.7.5.1 | 恢复日志列表 | 0.56d | 2019-11-07 09:36 | 2019-11-07 15:03 | 134 | 6.58d | 0d | 冯雷 [90%] | 4h |
| 137 | 1.2.7.5.2 | 查看恢复日志备注 | 0.56d | 2019-11-07 15:03 | 2019-11-08 10:29 | 136 | 6.58d | 0d | 冯雷 [90%] | 4h |
| 138 | 1.2.7.6 | **设备使用情况** | 1.11d | 2019-11-08 10:29 | 2019-11-11 11:23 |  | 6.58d |  |  | 8h |
| 139 | 1.2.7.6.1 | 备使用情况列表 | 0.56d | 2019-11-08 10:29 | 2019-11-08 15:56 | 137 | 6.58d | 0d | 冯雷 [90%] | 4h |
| 140 | 1.2.7.6.2 | 删除设备使用情况 | 0.56d | 2019-11-08 15:56 | 2019-11-11 11:23 | 139 | 6.58d | 0d | 冯雷 [90%] | 4h |
| 141 | 1.2.8 | **实验帮助** | 2.14d | 2019-11-11 13:36 | 2019-11-13 14:45 |  | 0d |  |  | 12h |
| 142 | 1.2.8.1 | 实验帮助-实验帮助列表 | 0.71d | 2019-11-11 13:36 | 2019-11-12 10:19 | 119 | 0d |  | 王战永 [70%] | 4h |
| 143 | 1.2.8.2 | 实验帮助-上传实验帮助 | 0.71d | 2019-11-12 10:19 | 2019-11-13 08:02 | 142 | 0d |  | 王战永 [70%] | 4h |
| 144 | 1.2.8.3 | 实验帮助-删除实验帮助 | 0.71d | 2019-11-13 08:02 | 2019-11-13 14:45 | 143 | 0d |  | 王战永 [70%] | 4h |
| 145 | 1.2.9 | **设备恢复** | 0.56d | 2019-11-11 11:23 | 2019-11-11 16:49 |  | 6.58d |  |  | 4h |
| 146 | 1.2.9.1 | 设备恢复-设备恢复列表 | 0.56d | 2019-11-11 11:23 | 2019-11-11 16:49 | 140 | 6.58d | 0d | 冯雷 [90%] | 4h |
| 147 | 1.2.10 | **系统管理** | 4.29d | 2019-11-13 14:45 | 2019-11-20 08:02 |  | 0d |  |  | 24h |
| 148 | 1.2.10.1 | 系统设置-编辑系统设置 | 0.71d | 2019-11-13 14:45 | 2019-11-14 11:27 | 144 | 0d |  | 王战永 [70%] | 4h |
| 149 | 1.2.10.2 | 系统公告-系统公告列表 | 0.71d | 2019-11-14 11:27 | 2019-11-15 09:10 | 148 | 0d |  | 王战永 [70%] | 4h |
| 150 | 1.2.10.3 | 系统公告-发布系统公告 | 0.71d | 2019-11-15 09:10 | 2019-11-15 15:53 | 149 | 0d |  | 王战永 [70%] | 4h |
| 151 | 1.2.10.4 | 系统公告-查看系统公告详情 | 0.71d | 2019-11-15 15:53 | 2019-11-18 13:36 | 150 | 0d |  | 王战永 [70%] | 4h |
| 152 | 1.2.10.5 | 系统公告-删除系统公告 | 0.71d | 2019-11-18 13:36 | 2019-11-19 10:19 | 151 | 0d |  | 王战永 [70%] | 4h |
| 153 | 1.2.10.6 | 系统升级 | 0.71d | 2019-11-19 10:19 | 2019-11-20 08:02 | 152 | 0d |  | 王战永 [70%] | 4h |
| 154 | 1.3 | **前台功能** | 11.03d | 2019-11-11 16:49 | 2019-11-27 08:02 |  | 6.03d |  |  | 64.03h |
| 155 | 1.3.1 | 前台首页 | 0.56d | 2019-11-15 09:48 | 2019-11-15 15:17 |  | 21.5d |  | 冯雷 [90%] | 4.03h |

| ID | WBS | Task | Duration | Start | Finish | Predecessors | Total slack | Free slack | Resources | Work |
| --- | --- | --- | --- | --- | --- | --- | --- | --- | --- | --- |
| 156 | 1.3.2 | **课堂实验** | 1.11d | 2019-11-11 16:49 | 2019-11-13 08:43 |  | 6.58d |  |  | 8h |
| 157 | 1.3.2.1 | 课堂实验-课堂实验列表 | 0.56d | 2019-11-11 16:49 | 2019-11-12 13:16 | 146 | 6.58d | 0d | 冯雷 [90%] | 4h |
| 158 | 1.3.2.2 | 课堂实验-操作课堂实验 | 0.56d | 2019-11-12 13:16 | 2019-11-13 08:43 | 157 | 6.58d | 0d | 冯雷 [90%] | 4h |
| 159 | 1.3.3 | **实验报告** | 2.22d | 2019-11-13 08:43 | 2019-11-15 10:30 |  | 6.58d |  |  | 16h |
| 160 | 1.3.3.1 | 实验报告-实验报告列表 | 0.56d | 2019-11-13 08:43 | 2019-11-13 14:09 | 158 | 6.58d | 0d | 冯雷 [90%] | 4h |
| 161 | 1.3.3.2 | 实验报告-查看实验报告详情 | 0.56d | 2019-11-13 14:09 | 2019-11-14 09:36 | 160 | 6.58d | 0d | 冯雷 [90%] | 4h |
| 162 | 1.3.3.3 | 实验报告-批改实验报告 | 0.56d | 2019-11-14 09:36 | 2019-11-14 15:03 | 161 | 6.58d | 0d | 冯雷 [90%] | 4h |
| 163 | 1.3.3.4 | 实验报告-删除实验报告 | 0.56d | 2019-11-14 15:03 | 2019-11-15 10:30 | 162 | 6.58d | 0d | 冯雷 [90%] | 4h |
| 164 | 1.3.4 | **实验日志** | 1.43d | 2019-11-20 08:02 | 2019-11-21 11:28 |  | 0d |  |  | 8h |
| 165 | 1.3.4.1 | 实验日志-实验日志列表 | 0.71d | 2019-11-20 08:02 | 2019-11-20 14:45 | 153 | 0d |  | 王战永 [70%] | 4h |
| 166 | 1.3.4.2 | 实验日志-查看详细命令 | 0.71d | 2019-11-20 14:45 | 2019-11-21 11:28 | 165 | 0d |  | 王战永 [70%] | 4h |
| 167 | 1.3.5 | **用户信息** | 1.43d | 2019-11-21 11:28 | 2019-11-22 15:54 |  | 0d |  |  | 8h |
| 168 | 1.3.5.1 | 信息修改-编辑用户信息 | 0.71d | 2019-11-21 11:28 | 2019-11-22 09:11 | 166 | 0d |  | 王战永 [70%] | 4h |
| 169 | 1.3.5.2 | 密码修改-修改密码 | 0.71d | 2019-11-22 09:11 | 2019-11-22 15:54 | 168 | 0d |  | 王战永 [70%] | 4h |
| 170 | 1.3.6 | **实验帮助** | 0.56d | 2019-11-15 10:30 | 2019-11-15 15:56 |  | 6.58d |  |  | 4h |
| 171 | 1.3.6.1 | 实验帮助-实验帮助列表 | 0.56d | 2019-11-15 10:30 | 2019-11-15 15:56 | 163 | 6.58d | 0d | 冯雷 [90%] | 4h |
| 172 | 1.3.7 | **系统公告** | 1.43d | 2019-11-22 15:54 | 2019-11-26 10:19 |  | 0d |  |  | 8h |
| 173 | 1.3.7.1 | 系统公告-系统公告列表 | 0.71d | 2019-11-22 15:54 | 2019-11-25 13:36 | 169 | 0d |  | 王战永 [70%] | 4h |
| 174 | 1.3.7.2 | 系统公告-查看系统公告详情 | 0.71d | 2019-11-25 13:36 | 2019-11-26 10:19 | 173 | 0d |  | 王战永 [70%] | 4h |
| 175 | 1.3.8 | **登录注册** | 7.14d | 2019-11-15 15:56 | 2019-11-27 08:02 |  | 0d |  |  | 8h |
| 176 | 1.3.8.1 | 登录页面 | 0.56d | 2019-11-15 15:56 | 2019-11-18 11:23 | 171 | 6.58d |  | 冯雷 [90%] | 4h |
| 177 | 1.3.8.2 | 注册页面 | 0.71d | 2019-11-26 10:19 | 2019-11-27 08:02 | 174 | 0d |  | 王战永 [70%] | 4h |
| 178 | 1.4 | 已知bug/需求修改 | 14.29d | 2019-11-27 08:02 | 2019-12-17 10:19 | 176, 177 | 0d |  | 冯雷 [90%]; 王战永 [70%] | 160h |
